# new prec_ans

How a schedule from MS Project changed from version to version. A marks actual dates.

## Version 1 (saved 2014-01-21, file MLRD progress to end Mar 2013.mpp)

Note of the change: EA Sports To the Game ft Spawning

| ID | WBS | Task | Duration | Start | Finish | Predecessors | Total float |
| --- | --- | --- | --- | --- | --- | --- | --- |
| 1 | 1 | **Initial Planning** | 6d | 2013-03-04 | 2013-03-11 |  | 0d |
| 2 |  | Produce Project Plan | 4d | 2013-03-04 | 2013-03-07 |  | 0d |
| 3 |  | Set-up filing system | 1d | 2013-03-08 | 2013-03-08 | 2 | 1d |
| 4 |  | Review/Finalise plan | 1d | 2013-03-11 | 2013-03-11 | 2 | 0d |
| 5 | 2 | **Requirements Identification** | 17d | 2013-03-12 | 2013-04-03 |  | 0d |
| 6 |  | Examine existing MLRD database documentation | 2d | 2013-03-12 | 2013-03-13 | 4, 3 | 0d |
| 7 |  | Interview Users | 4d | 2013-03-14 | 2013-03-19 | 6 | 0d |
| 8 |  | Undertake Use Case Modeling | 5d | 2013-03-20 | 2013-03-26 | 7 | 0d |
| 9 |  | Prototype User Interface | 5d | 2013-03-20 | 2013-03-26 | 7 | 0d |
| 10 |  | Produce Use Case Model Survey | 5d | 2013-03-27 | 2013-04-02 | 8 | 0d |
| 11 |  | Produce User Interface Specification | 5d | 2013-03-27 | 2013-04-02 | 9 | 0d |
| 12 |  | Review/finalize Requirements documentation | 1d | 2013-04-03 | 2013-04-03 | 11, 10 | 0d |
| 13 | 3 | **Requirements Specification** | 15d | 2013-04-04 | 2013-04-24 |  | 0d |
| 14 |  | Identify Domain Objects/Attributes | 4d | 2013-04-04 | 2013-04-09 | 12 | 0d |
| 15 |  | Produce Class/Collaboration diagrams | 5d | 2013-04-10 | 2013-04-16 | 14 | 0d |
| 16 |  | Write Use Case Realization Reports | 5d | 2013-04-17 | 2013-04-23 | 15 | 0d |
| 17 |  | Review/finalize Use Case Realization Reports | 1d | 2013-04-24 | 2013-04-24 | 16 | 0d |
| 18 | 4 | **Design Modeling** | 26d | 2013-04-25 | 2013-05-30 |  | 0d |
| 19 |  | Adjust objects to implementation architecture | 4d | 2013-04-25 | 2013-04-30 | 17 | 0d |
| 20 |  | Define object associations (static/ dynamic/creation) | 4d | 2013-05-01 | 2013-05-06 | 19 | 0d |
| 21 |  | Create DB logical Design | 4d | 2013-05-07 | 2013-05-10 | 20 | 1d |
| 22 |  | Produce Sequence Diagrams | 5d | 2013-05-07 | 2013-05-13 | 20 | 0d |
| 23 |  | Specify object attributes/operations | 4d | 2013-05-14 | 2013-05-17 | 22 | 0d |
| 24 |  | Structure object model for implementation | 4d | 2013-05-20 | 2013-05-23 | 23 | 0d |
| 25 |  | Produce Design Model Report | 4d | 2013-05-24 | 2013-05-29 | 24, 27 | 0d |
| 26 |  | Produce Data Base Physical Design | 4d | 2013-05-13 | 2013-05-16 | 21 | 1d |
| 27 |  | Set database parameters | 4d | 2013-05-17 | 2013-05-22 | 26 | 1d |
| 28 |  | Review/finalize Design Document | 1d | 2013-05-30 | 2013-05-30 | 25 | 0d |
| 29 | 5 | **Programming** | 33d | 2013-05-31 | 2013-07-16 |  | 0d |
| 30 |  | Create C# code | 10d | 2013-07-03 | 2013-07-16 | 28 | 0d |
| 31 |  | Define Database tables and fields | 10d | 2013-05-31 | 2013-06-13 | 28 | 19d |
| 32 | 6 | **Database Migration** | 23d | 2013-05-31 | 2013-07-02 |  | 10d |
| 33 |  | Produce Database migration plan | 2d | 2013-05-31 | 2013-06-03 | 26 | 10d |
| 34 |  | Review/finalize Database migration plan | 1d | 2013-06-14 | 2013-06-14 | 33 | 10d |
| 35 |  | Extract Data from existing MLRD database | 4d | 2013-06-17 | 2013-06-20 | 34 | 10d |
| 36 |  | Data Checking & Data cleaning | 4d | 2013-06-21 | 2013-06-26 | 35 | 10d |
| 37 |  | Upload data into new MLRD database | 4d | 2013-06-27 | 2013-07-02 | 31, 36 | 10d |
| 38 | 7 | **Systems Testing** | 34d | 2013-06-19 | 2013-08-05 |  | 0d |
| 39 |  | Prepare Systems Test Plan | 4d | 2013-06-19 | 2013-06-24 | 28 | 2d |
| 40 |  | Review/finalize Systems Test Plan | 1d | 2013-07-17 | 2013-07-17 | 39 | 2d |
| 41 |  | Integrate Code components & Database | 3d | 2013-07-17 | 2013-07-19 | 30, 37 | 0d |
| 42 |  | Perform Systems Testing | 10d | 2013-07-22 | 2013-08-02 | 40, 41 | 0d |
| 43 |  | Review Results/Corrective Action | 1d | 2013-08-05 | 2013-08-05 | 42 | 0d |
| 44 | 8 | **User Acceptance** | 25d | 2013-07-18 | 2013-08-21 |  | 0d |
| 45 |  | Write User Guide | 5d | 2013-07-18 | 2013-07-24 | 12 | 3d |
| 46 |  | Review/finalize User Guide | 1d | 2013-07-25 | 2013-07-25 | 45 | 3d |
| 47 |  | Write Acceptance test plan | 3d | 2013-07-26 | 2013-07-30 | 46 | 3d |
| 48 |  | Review/finalize Acceptance test plan | 1d | 2013-07-31 | 2013-07-31 | 47 | 3d |
| 49 |  | Install System | 1d | 2013-08-06 | 2013-08-06 | 48, 43 | 0d |
| 50 |  | Perform Acceptance Test | 10d | 2013-08-07 | 2013-08-20 | 49 | 0d |
| 51 |  | Review Test Results/Corrective Action | 1d | 2013-08-21 | 2013-08-21 | 50 | 0d |

## Version 2 (saved 2017-02-15, file PM_CTRL_ASSIGNMENT2013_progress to end Apr 2013 levelled.mpp)

Note of the change: EA Sports To the Game ft Spawning

Last finish 2013-08-21 → 2013-08-28 (+7d). Complete tasks 0 → 14.

Changed:

| ID | Task | Start | Finish | Duration | Complete | Total float | Other |
| --- | --- | --- | --- | --- | --- | --- | --- |
| 1 | **Initial Planning** | 2013-03-04 A | 2013-03-11 A |  | 0% → 100% | 0d → none | baseline start none → 2013-03-04; baseline finish none → 2013-03-11 |
| 2 | Produce Project Plan | 2013-03-04 A | 2013-03-07 A |  | 0% → 100% | 0d → none | baseline start none → 2013-03-04; baseline finish none → 2013-03-07 |
| 3 | Set-up filing system | 2013-03-08 A | 2013-03-08 A |  | 0% → 100% | 1d → none | baseline start none → 2013-03-08; baseline finish none → 2013-03-08 |
| 4 | Review/Finalise plan | 2013-03-11 A | 2013-03-11 A |  | 0% → 100% | 0d → none | baseline start none → 2013-03-11; baseline finish none → 2013-03-11 |
| 5 | **Requirements Identification** | 2013-03-12 A | 2013-04-03 A |  | 0% → 100% | 0d → none | baseline start none → 2013-03-12; baseline finish none → 2013-04-03 |
| 6 | Examine existing MLRD database documentation | 2013-03-12 A | 2013-03-13 A |  | 0% → 100% | 0d → none | baseline start none → 2013-03-12; baseline finish none → 2013-03-13 |
| 7 | Interview Users | 2013-03-14 A | 2013-03-19 A |  | 0% → 100% | 0d → none | baseline start none → 2013-03-14; baseline finish none → 2013-03-19 |
| 8 | Undertake Use Case Modeling | 2013-03-20 A | 2013-03-26 A |  | 0% → 100% | 0d → none | baseline start none → 2013-03-20; baseline finish none → 2013-03-26 |
| 9 | Prototype User Interface | 2013-03-20 A | 2013-03-26 A |  | 0% → 100% | 0d → none | baseline start none → 2013-03-20; baseline finish none → 2013-03-26 |
| 10 | Produce Use Case Model Survey | 2013-03-27 A | 2013-04-02 A |  | 0% → 100% | 0d → none | baseline start none → 2013-03-27; baseline finish none → 2013-04-02 |
| 11 | Produce User Interface Specification | 2013-03-27 A | 2013-04-02 A |  | 0% → 100% | 0d → none | baseline start none → 2013-03-27; baseline finish none → 2013-04-02 |
| 12 | Review/finalize Requirements documentation | 2013-04-03 A | 2013-04-03 A |  | 0% → 100% | 0d → none | baseline start none → 2013-04-03; baseline finish none → 2013-04-03 |
| 13 | **Requirements Specification** | 2013-04-04 A | 2013-04-24 → 2013-04-26 A (+2d) | 15d → 17d | 0% → 100% | 0d → none | baseline start none → 2013-04-04; baseline finish none → 2013-04-24 |
| 14 | Identify Domain Objects/Attributes | 2013-04-04 A | 2013-04-09 → 2013-04-10 A (+1d) | 4d → 5d | 0% → 100% | 0d → none | baseline start none → 2013-04-04; baseline finish none → 2013-04-09 |
| 15 | Produce Class/Collaboration diagrams | 2013-04-10 → 2013-04-11 A (+1d) | 2013-04-16 → 2013-04-18 A (+2d) | 5d → 6d | 0% → 100% | 0d → none | baseline start none → 2013-04-10; baseline finish none → 2013-04-16 |
| 16 | Write Use Case Realization Reports | 2013-04-17 → 2013-04-19 A (+2d) | 2013-04-23 → 2013-04-25 A (+2d) |  | 0% → 100% | 0d → none | baseline start none → 2013-04-17; baseline finish none → 2013-04-23 |
| 17 | Review/finalize Use Case Realization Reports | 2013-04-24 → 2013-04-26 A (+2d) | 2013-04-24 → 2013-04-26 A (+2d) |  | 0% → 100% | 0d → none | baseline start none → 2013-04-24; baseline finish none → 2013-04-24 |
| 18 | **Design Modeling** | 2013-04-25 → 2013-04-29 A (+4d) | 2013-05-30 → 2013-06-04 (+5d) | 26d → 27d | 0% → 5% |  | baseline start none → 2013-04-25; baseline finish none → 2013-05-30 |
| 19 | Adjust objects to implementation architecture | 2013-04-25 → 2013-04-29 A (+4d) | 2013-04-30 → 2013-05-03 (+3d) | 4d → 5d | 0% → 40% |  | baseline start none → 2013-04-25; baseline finish none → 2013-04-30 |
| 20 | Define object associations (static/ dynamic/creation) | 2013-05-01 → 2013-05-06 (+5d) | 2013-05-06 → 2013-05-09 (+3d) |  |  |  | baseline start none → 2013-05-01; baseline finish none → 2013-05-06 |
| 21 | Create DB logical Design | 2013-05-07 → 2013-05-10 (+3d) | 2013-05-10 → 2013-05-15 (+5d) |  |  |  | baseline start none → 2013-05-07; baseline finish none → 2013-05-10 |
| 22 | Produce Sequence Diagrams | 2013-05-07 → 2013-05-10 (+3d) | 2013-05-13 → 2013-05-16 (+3d) |  |  |  | baseline start none → 2013-05-07; baseline finish none → 2013-05-13 |
| 23 | Specify object attributes/operations | 2013-05-14 → 2013-05-17 (+3d) | 2013-05-17 → 2013-05-22 (+5d) |  |  |  | baseline start none → 2013-05-14; baseline finish none → 2013-05-17 |
| 24 | Structure object model for implementation | 2013-05-20 → 2013-05-23 (+3d) | 2013-05-23 → 2013-05-28 (+5d) |  |  |  | baseline start none → 2013-05-20; baseline finish none → 2013-05-23 |
| 25 | Produce Design Model Report | 2013-05-24 → 2013-05-29 (+5d) | 2013-05-29 → 2013-06-03 (+5d) |  |  |  | baseline start none → 2013-05-24; baseline finish none → 2013-05-29 |
| 26 | Produce Data Base Physical Design | 2013-05-13 → 2013-05-16 (+3d) | 2013-05-16 → 2013-05-21 (+5d) |  |  |  | baseline start none → 2013-05-13; baseline finish none → 2013-05-16 |
| 27 | Set database parameters | 2013-05-17 → 2013-05-22 (+5d) | 2013-05-22 → 2013-05-27 (+5d) |  |  |  | baseline start none → 2013-05-17; baseline finish none → 2013-05-22 |
| 28 | Review/finalize Design Document | 2013-05-30 → 2013-06-04 (+5d) | 2013-05-30 → 2013-06-04 (+5d) |  |  |  | baseline start none → 2013-05-30; baseline finish none → 2013-05-30 |
| 29 | **Programming** | 2013-05-31 → 2013-06-20 (+20d) | 2013-07-16 → 2013-07-17 (+1d) | 33d → 20d |  |  | baseline start none → 2013-05-31; baseline finish none → 2013-07-16 |
| 30 | Create C# code | 2013-07-03 → 2013-07-04 (+1d) | 2013-07-16 → 2013-07-17 (+1d) |  |  | 0d → 4d | baseline start none → 2013-07-03; baseline finish none → 2013-07-16 |
| 31 | Define Database tables and fields | 2013-05-31 → 2013-06-20 (+20d) | 2013-06-13 → 2013-07-03 (+20d) |  |  | 19d → 0d | baseline start none → 2013-05-31; baseline finish none → 2013-06-13 |
| 32 | **Database Migration** | 2013-05-31 → 2013-06-05 (+5d) | 2013-07-02 → 2013-07-23 (+21d) | 23d → 35d |  | 10d → 0d | baseline start none → 2013-05-31; baseline finish none → 2013-07-02 |
| 33 | Produce Database migration plan | 2013-05-31 → 2013-06-05 (+5d) | 2013-06-03 → 2013-06-06 (+3d) |  |  |  | baseline start none → 2013-05-31; baseline finish none → 2013-06-03 |
| 34 | Review/finalize Database migration plan | 2013-06-14 → 2013-06-07 (-7d) | 2013-06-14 → 2013-06-07 (-7d) |  |  |  | baseline start none → 2013-06-14; baseline finish none → 2013-06-14 |
| 35 | Extract Data from existing MLRD database | 2013-06-17 → 2013-06-10 (-7d) | 2013-06-20 → 2013-06-13 (-7d) |  |  |  | baseline start none → 2013-06-17; baseline finish none → 2013-06-20 |
| 36 | Data Checking & Data cleaning | 2013-06-21 → 2013-06-14 (-7d) | 2013-06-26 → 2013-06-19 (-7d) |  |  |  | baseline start none → 2013-06-21; baseline finish none → 2013-06-26 |
| 37 | Upload data into new MLRD database | 2013-06-27 → 2013-07-18 (+21d) | 2013-07-02 → 2013-07-23 (+21d) |  |  | 10d → 0d | baseline start none → 2013-06-27; baseline finish none → 2013-07-02 |
| 38 | **Systems Testing** | 2013-06-19 → 2013-06-24 (+5d) | 2013-08-05 → 2013-08-12 (+7d) | 34d → 36d |  |  | baseline start none → 2013-06-19; baseline finish none → 2013-08-05 |
| 39 | Prepare Systems Test Plan | 2013-06-19 → 2013-06-24 (+5d) | 2013-06-24 → 2013-06-27 (+3d) |  |  | 2d → 20d | baseline start none → 2013-06-19; baseline finish none → 2013-06-24 |
| 40 | Review/finalize Systems Test Plan | 2013-07-17 → 2013-06-28 (-19d) | 2013-07-17 → 2013-06-28 (-19d) |  |  | 2d → 20d | baseline start none → 2013-07-17; baseline finish none → 2013-07-17 |
| 41 | Integrate Code components & Database | 2013-07-17 → 2013-07-24 (+7d) | 2013-07-19 → 2013-07-26 (+7d) |  |  |  | baseline start none → 2013-07-17; baseline finish none → 2013-07-19 |
| 42 | Perform Systems Testing | 2013-07-22 → 2013-07-29 (+7d) | 2013-08-02 → 2013-08-09 (+7d) |  |  |  | baseline start none → 2013-07-22; baseline finish none → 2013-08-02 |
| 43 | Review Results/Corrective Action | 2013-08-05 → 2013-08-12 (+7d) | 2013-08-05 → 2013-08-12 (+7d) |  |  |  | baseline start none → 2013-08-05; baseline finish none → 2013-08-05 |
| 44 | **User Acceptance** |  | 2013-08-21 → 2013-08-28 (+7d) | 25d → 30d |  |  | baseline start none → 2013-07-18; baseline finish none → 2013-08-21 |
| 45 | Write User Guide |  |  |  |  | 3d → 8d | baseline start none → 2013-07-18; baseline finish none → 2013-07-24 |
| 46 | Review/finalize User Guide |  |  |  |  | 3d → 8d | baseline start none → 2013-07-25; baseline finish none → 2013-07-25 |
| 47 | Write Acceptance test plan |  |  |  |  | 3d → 8d | baseline start none → 2013-07-26; baseline finish none → 2013-07-30 |
| 48 | Review/finalize Acceptance test plan |  |  |  |  | 3d → 8d | baseline start none → 2013-07-31; baseline finish none → 2013-07-31 |
| 49 | Install System | 2013-08-06 → 2013-08-13 (+7d) | 2013-08-06 → 2013-08-13 (+7d) |  |  |  | baseline start none → 2013-08-06; baseline finish none → 2013-08-06 |
| 50 | Perform Acceptance Test | 2013-08-07 → 2013-08-14 (+7d) | 2013-08-20 → 2013-08-27 (+7d) |  |  |  | baseline start none → 2013-08-07; baseline finish none → 2013-08-20 |
| 51 | Review Test Results/Corrective Action | 2013-08-21 → 2013-08-28 (+7d) | 2013-08-21 → 2013-08-28 (+7d) |  |  |  | baseline start none → 2013-08-21; baseline finish none → 2013-08-21 |
